How a schedule from GanttProject changed from version to version. A marks actual dates.

## Version 1 (saved 2017-03-14)

Note of the change: Base version

| ID | WBS | Task | Duration | Start | Finish | Complete |
| --- | --- | --- | --- | --- | --- | --- |
| 1 | 1 | **Project** | 51d | 2017-02-13 | 2017-04-04 | 43% |
| 2 | 1.1 | **Device Manager Remodal** | 45d | 2017-02-13 | 2017-03-29 | 48% |
| 3 | 1.1.1 | **Design** | 16d | 2017-02-13 | 2017-02-28 | 100% |
| 4 |  | Device Manager Code Review | 16d | 2017-02-13 | 2017-02-28 | 100% |
| 5 |  | Prepare a proposal to remodal Device Manager | 16d | 2017-02-13 | 2017-02-28 | 100% |
| 6 | 1.1.2 | **Device Manager implementation** | 17d | 2017-03-13 | 2017-03-29 | 1% |
| 7 | 1.1.2.1 | **Device Labels update** | 1d | 2017-03-13 | 2017-03-13 | 3% |
| 8 |  | Implement new labeling scheme for Device Manager | 1d | 2017-03-13 | 2017-03-13 | 6% |
| 9 |  | Update the Device Manager metadata files to generate labels. | 1d | 2017-03-13 | 2017-03-13 |  |
| 10 | 1.1.2.2 | **Updates to Device Registry** | 2d | 2017-03-13 | 2017-03-14 | 10% |
| 11 |  | Removal of device sessions form Device Manager. | 1d | 2017-03-13 | 2017-03-13 | 50% |
| 12 |  | Update device Open/Close mechanism to handle removal of device sessions form Device Manager | 2d | 2017-03-13 | 2017-03-14 |  |
| 13 | 1.1.2.3 | **Device Functionality Lists** | 1d | 2017-03-13 | 2017-03-13 |  |
| 14 |  | Add support of Functionality lists to Device Manager | 1d | 2017-03-13 | 2017-03-13 |  |
| 15 |  | Update device registration flow via DVC_Dev_Register. | 1d | 2017-03-13 | 2017-03-13 |  |
| 16 |  | Update device unregistration flow via DVC_Dev_Unregister. | 1d | 2017-03-13 | 2017-03-13 |  |
| 17 | 1.1.2.4 | **Device Manager New APIs** | 1d | 2017-03-13 | 2017-03-13 |  |
| 18 |  | Implement DVC_Dev_Request API | 1d | 2017-03-13 | 2017-03-13 |  |
| 19 |  | Implement DVC_Dev_Get_Instance API. | 1d | 2017-03-13 | 2017-03-13 |  |
| 20 | 1.1.2.5 | **Device Manager Deprecated APIs** | 1d | 2017-03-13 | 2017-03-13 |  |
| 21 |  | Remove Device Manager's deprecated APIs (DVC_Dev_Read/Write and DVC_Dev_IOCTL) | 1d | 2017-03-13 | 2017-03-13 |  |
| 22 | 1.1.2.6 | **Device Discovery Mechanism** | 2d | 2017-03-13 | 2017-03-14 |  |
| 23 |  | Remove known_id_list and its references from device discovery | 1d | 2017-03-13 | 2017-03-13 |  |
| 24 |  | Implement APIs and code updated for cases where new device is added to the system | 2d | 2017-03-13 | 2017-03-14 |  |
| 25 |  | Implement APIs and code updated for cases where new listener is added to the system | 2d | 2017-03-13 | 2017-03-14 |  |
| 26 |  | Update internals of DVC_Reg_Change_Search in accordance with the new design proposal. | 2d | 2017-03-13 | 2017-03-14 |  |
| 27 |  | Prototype Power management services with new Device Manager. | 4d | 2017-03-13 | 2017-03-16 |  |
| 28 |  | Incorporate Design Review Feedback | 5d | 2017-03-13 | 2017-03-17 |  |
| 29 | 1.2 | **Unified Serial Driver** | 25d | 2017-02-28 | 2017-03-24 | 52% |
| 30 | 1.2.1 | **Design** | 18d | 2017-02-28 | 2017-03-17 | 65% |
| 31 |  | Unified BSP Interface proposal | 17d | 2017-03-01 | 2017-03-17 | 42% |
| 32 |  | Unified BSP Interface proposal | 11d | 2017-02-28 | 2017-03-10 | 100% |
| 33 |  | Serial Driver implementation | 5d | 2017-03-20 | 2017-03-24 |  |
| 34 | 1.3 | **Unified Ethernet Driver** | 9d | 2017-03-27 | 2017-04-04 |  |
| 35 |  | Ethernet driver Implementation for Sabrelite | 9d | 2017-03-27 | 2017-04-04 |  |

## Version 2 (saved 2017-03-16)

Note of the change: Fixed some bug

Last finish 2017-04-04 → 2017-03-29 (-6d). Complete tasks 3 → 5.

Changed:

| ID | Task | Start | Finish | Duration | Complete |
| --- | --- | --- | --- | --- | --- |
| 1 | **Project** |  | 2017-04-04 → 2017-03-29 (-6d) | 51d → 45d | 43% → 48% |
| 2 | **Device Manager Remodal** |  |  |  | 48% → 54% |
| 6 | **Device Manager implementation** |  |  |  | 1% → 10% |
| 7 | **Device Labels update** |  | 2017-03-13 → 2017-03-14 (+1d) | 1d → 2d | 3% → 38% |
| 9 | Update the Device Manager metadata files to generate labels. | 2017-03-13 → 2017-03-14 (+1d) | 2017-03-13 → 2017-03-14 (+1d) |  | 0% → 100% |
| 10 | **Updates to Device Registry** |  | 2017-03-14 → 2017-03-17 (+3d) | 2d → 5d |  |
| 12 | Update device Open/Close mechanism to handle removal of device sessions form Device Manager | 2017-03-13 → 2017-03-16 (+3d) | 2017-03-14 → 2017-03-17 (+3d) |  |  |
| 13 | **Device Functionality Lists** | 2017-03-13 → 2017-03-14 (+1d) | 2017-03-13 → 2017-03-16 (+3d) | 1d → 3d | 0% → 36% |
| 14 | Add support of Functionality lists to Device Manager | 2017-03-13 → 2017-03-16 (+3d) | 2017-03-13 → 2017-03-16 (+3d) |  |  |
| 15 | Update device registration flow via DVC_Dev_Register. | 2017-03-13 → 2017-03-15 (+2d) | 2017-03-13 → 2017-03-15 (+2d) |  | 0% → 38% |
| 16 | Update device unregistration flow via DVC_Dev_Unregister. | 2017-03-13 → 2017-03-14 (+1d) | 2017-03-13 → 2017-03-14 (+1d) |  | 0% → 150% |
| 17 | **Device Manager New APIs** | 2017-03-13 → 2017-03-15 (+2d) | 2017-03-13 → 2017-03-15 (+2d) |  | 0% → 58% |
| 18 | Implement DVC_Dev_Request API | 2017-03-13 → 2017-03-15 (+2d) | 2017-03-13 → 2017-03-15 (+2d) |  | 0% → 38% |
| 19 | Implement DVC_Dev_Get_Instance API. | 2017-03-13 → 2017-03-15 (+2d) | 2017-03-13 → 2017-03-15 (+2d) |  | 0% → 100% |
| 20 | **Device Manager Deprecated APIs** | 2017-03-13 → 2017-03-16 (+3d) | 2017-03-13 → 2017-03-16 (+3d) |  |  |
| 21 | Remove Device Manager's deprecated APIs (DVC_Dev_Read/Write and DVC_Dev_IOCTL) | 2017-03-13 → 2017-03-16 (+3d) | 2017-03-13 → 2017-03-16 (+3d) |  |  |
| 22 | **Device Discovery Mechanism** | 2017-03-13 → 2017-03-16 (+3d) | 2017-03-14 → 2017-03-17 (+3d) |  |  |
| 23 | Remove known_id_list and its references from device discovery | 2017-03-13 → 2017-03-16 (+3d) | 2017-03-13 → 2017-03-16 (+3d) |  |  |
| 24 | Implement APIs and code updated for cases where new device is added to the system | 2017-03-13 → 2017-03-16 (+3d) | 2017-03-14 → 2017-03-17 (+3d) |  |  |
| 25 | Implement APIs and code updated for cases where new listener is added to the system | 2017-03-13 → 2017-03-16 (+3d) | 2017-03-14 → 2017-03-17 (+3d) |  |  |
| 26 | Update internals of DVC_Reg_Change_Search in accordance with the new design proposal. | 2017-03-13 → 2017-03-16 (+3d) | 2017-03-14 → 2017-03-17 (+3d) |  |  |
| 27 | Prototype Power management services with new Device Manager. | 2017-03-13 → 2017-03-16 (+3d) | 2017-03-16 → 2017-03-21 (+5d) | 4d → 6d |  |
| 28 | Incorporate Design Review Feedback | 2017-03-13 → 2017-03-16 (+3d) | 2017-03-17 → 2017-03-22 (+5d) | 5d → 7d |  |
| 34 | **Unified Ethernet Driver** | 2017-03-27 → 2017-03-16 (-11d) | 2017-04-04 → 2017-03-27 (-8d) | 9d → 12d |  |
| 35 | Ethernet driver Implementation for Sabrelite | 2017-03-27 → 2017-03-16 (-11d) | 2017-04-04 → 2017-03-27 (-8d) | 9d → 12d |  |

## Version 3 (saved 2017-03-17)

Last finish 2017-03-29 → 2017-04-14 (+16d). Complete tasks 5 → 7.

Changed:

| ID | Task | Finish | Duration | Complete | Other |
| --- | --- | --- | --- | --- | --- |
| 1 | **Project** | 2017-03-29 → 2017-04-14 (+16d) | 45d → 61d | 48% → 36% |  |
| 2 | **Device Manager Remodal** |  |  | 54% → 58% |  |
| 6 | **Device Manager implementation** |  |  | 10% → 17% |  |
| 10 | **Updates to Device Registry** |  |  | 10% → 50% |  |
| 12 | Update device Open/Close mechanism to handle removal of device sessions form Device Manager |  |  | 0% → 50% |  |
| 17 | **Device Manager New APIs** |  |  | 58% → 100% |  |
| 18 | Implement DVC_Dev_Request API |  |  | 38% → 100% |  |
| 20 | **Device Manager Deprecated APIs** |  |  | 0% → 100% |  |
| 21 | Remove Device Manager's deprecated APIs (DVC_Dev_Read/Write and DVC_Dev_IOCTL) |  |  | 0% → 100% |  |
| 34 | **Unified Ethernet Driver** | 2017-03-27 → 2017-04-14 (+18d) | 12d → 30d |  |  |
| 35 | Unified Ethernet driver Implementation for Sabrelite | 2017-03-27 → 2017-03-29 (+2d) | 12d → 14d |  | was named Ethernet driver Implementation for Sabrelite; resources none → bwasim |

## Version 4 (saved 2017-03-17)

Last finish stays 2017-04-14.

Changed:

| ID | Task | Start | Finish | Duration |
| --- | --- | --- | --- | --- |
| 13 | **Device Functionality Lists** |  | 2017-03-16 → 2017-03-17 (+1d) | 3d → 4d |
| 14 | Add support of Functionality lists to Device Manager | 2017-03-16 → 2017-03-17 (+1d) | 2017-03-16 → 2017-03-17 (+1d) |  |
| 22 | **Device Discovery Mechanism** | 2017-03-16 → 2017-03-17 (+1d) | 2017-03-17 → 2017-03-20 (+3d) | 2d → 4d |
| 23 | Remove known_id_list and its references from device discovery | 2017-03-16 → 2017-03-17 (+1d) | 2017-03-16 → 2017-03-17 (+1d) |  |
| 24 | Implement APIs and code updated for cases where new device is added to the system | 2017-03-16 → 2017-03-17 (+1d) | 2017-03-17 → 2017-03-20 (+3d) | 2d → 4d |
| 25 | Implement APIs and code updated for cases where new listener is added to the system | 2017-03-16 → 2017-03-17 (+1d) | 2017-03-17 → 2017-03-20 (+3d) | 2d → 4d |
| 26 | Update internals of DVC_Reg_Change_Search in accordance with the new design proposal. | 2017-03-16 → 2017-03-17 (+1d) | 2017-03-17 → 2017-03-20 (+3d) | 2d → 4d |
| 27 | Prototype Power management services with new Device Manager. | 2017-03-16 → 2017-03-17 (+1d) | 2017-03-21 → 2017-03-22 (+1d) |  |
| 28 | Incorporate Design Review Feedback | 2017-03-16 → 2017-03-17 (+1d) | 2017-03-22 → 2017-03-23 (+1d) |  |
| 34 | **Unified Ethernet Driver** | 2017-03-16 → 2017-03-17 (+1d) |  | 30d → 29d |
| 35 | Unified Ethernet driver Implementation for Sabrelite | 2017-03-16 → 2017-03-17 (+1d) | 2017-03-29 → 2017-03-30 (+1d) |  |
